# DRÖNER

Schedule from MS Project, 2025-02-03 to 2025-07-07, costs in €.

## Calendars

- Estándar: Mon-Fri 09:00-13:00, 15:00-19:00; Sat-Sun off.

## Resources

| Resource | Group | Rate |
| --- | --- | --- |
| Manuel Gato Thomasson | Jefe del Proyecto | 15 |
| Francisco Gento López | Ingeniero 1 | 15 |
| Fernando Gálvez Gómez | Ingeniero 2 | 15 |
| Antón Álvarez Alfaro | Técnico de Drones | 15 |
| Tyler Gregory Okonma | Desarrollador de Software 1 | 15 |
| Jordan Terrell Carter | Desarrollador de Software 2 | 15 |
| Juan Manuel Cortez Reyes | Experto en IA | 15 |
| Solána Imani Rowe | Soporte Técnico 1 | 15 |
| Jordan Timothy Jenks | Soporte Técnico 2 | 15 |
| Carlos Marí | Atención al Cliente 1 | 10 |
| Josep Puchades | Atención al Cliente 2 | 10 |
| Lara Fernández Castrelo | Atención al Cliente 3 | 10 |
| Belcalis Marlenis Cephus | Atención al Cliente 4 | 10 |

## Schedule

| ID | WBS | Task | Duration | Start | Finish | Predecessors | Baseline start | Baseline finish | Baseline duration | Total slack | Free slack | Resources | Work | Cost | Baseline cost |
| --- | --- | --- | --- | --- | --- | --- | --- | --- | --- | --- | --- | --- | --- | --- | --- |
| 1 | 1 | **Proyecto DRÖNER** | 110.54d | 2025-02-03 | 2025-07-07 |  | 2025-02-03 | 2025-06-26 | 103.54d | 0d |  |  | 3120h | 45,466.67 | 45,466.67 |
| 2 | 1.1 | **Planificación y Gestión** | 22d | 2025-02-03 | 2025-03-04 |  | 2025-02-03 | 2025-03-04 | 22d | 0d |  |  | 176h | 2,640 | 2,640 |
| 3 | 1.1.1 | Estudio del Mercado Delivery | 7d | 2025-02-03 | 2025-02-11 |  | 2025-02-03 | 2025-02-11 | 7d | 0d |  | Manuel Gato Thomasson | 56h | 840 | 840 |
| 4 | 1.1.2 | Contratación del Personal | 10d | 2025-02-12 | 2025-02-25 | 3 | 2025-02-12 | 2025-02-25 | 10d | 0d |  | Manuel Gato Thomasson | 80h | 1,200 | 1,200 |
| 5 | 1.1.3 | Presentación del Estudio Inicial | 5d | 2025-02-26 | 2025-03-04 | 4 | 2025-02-26 | 2025-03-04 | 5d | 0d |  | Manuel Gato Thomasson | 40h | 600 | 600 |
| 6 | 1.2 | **Prototipo Inicial** | 11d | 2025-03-05 | 2025-03-19 | 2 | 2025-03-05 | 2025-03-19 | 11d | 0d |  |  | 280h | 4,200 | 4,200 |
| 7 | 1.2.1 | Estudio de los Drones | 3.33d | 2025-03-05 | 2025-03-10 | 5 | 2025-03-05 | 2025-03-10 | 3.33d | 0d |  | Antón Álvarez Alfaro; Jordan Timothy Jenks; Solána Imani Rowe | 80h | 1,200 | 1,200 |
| 8 | 1.2.2 | Boceto del Diseño Software | 6.67d | 2025-03-10 | 2025-03-18 | 7 | 2025-03-10 | 2025-03-18 | 6.67d | 0d |  | Antón Álvarez Alfaro; Jordan Terrell Carter; Tyler Gregory Okonma | 160h | 2,400 | 2,400 |
| 9 | 1.2.3 | Aprobación del Diseño Conceptual | 1d | 2025-03-19 | 2025-03-19 | 8 | 2025-03-19 | 2025-03-19 | 1d | 0d |  | Antón Álvarez Alfaro; Fernando Gálvez Gómez; Francisco Gento López; Jordan Terrell Carter; Tyler Gregory Okonma | 40h | 600 | 600 |
| 10 | 1.3 | **Desarrollo Hardware** | 16.38d | 2025-03-20 | 2025-04-11 | 6 | 2025-02-26 | 2025-04-01 | 24.88d | 18.62d |  |  | 524h | 7,860 | 7,860 |
| 11 | 1.3.1 | Creación de la Central | 12.5d | 2025-03-20 | 2025-04-07 | 5SS | 2025-02-26 | 2025-03-31 | 23.5d | 22.5d |  | Antón Álvarez Alfaro; Fernando Gálvez Gómez; Francisco Gento López; Manuel Gato Thomasson | 400h | 6,000 | 6,000 |
| 12 | 1.3.2 | Diseño Sistema Operativo Hardware | 7.75d | 2025-03-27 | 2025-04-11 | 9 | 2025-03-20 | 2025-04-01 | 7.75d | 18.62d |  | Fernando Gálvez Gómez; Francisco Gento López; Jordan Timothy Jenks; Solána Imani Rowe | 124h | 1,860 | 1,860 |
| 13 | 1.4 | **Desarrollo Software** | 35d | 2025-03-20 | 2025-05-07 | 6 | 2025-03-20 | 2025-05-07 | 35d | 0d |  |  | 880h | 13,200 | 13,200 |
| 14 | 1.4.1 | **Desarrollo de la Web** | 35d | 2025-03-20 | 2025-05-07 | 6 | 2025-03-20 | 2025-05-07 | 35d | 0d |  |  | 440h | 6,600 | 6,600 |
| 15 | 1.4.1.1 | Diseño Gráfico de la Web | 10d | 2025-03-20 | 2025-04-04 | 9 | 2025-03-20 | 2025-04-04 | 10d | 0d |  | Jordan Terrell Carter; Jordan Timothy Jenks; Solána Imani Rowe; Tyler Gregory Okonma | 160h | 2,400 | 2,400 |
| 16 | 1.4.1.2 | Programación de la Web | 23.33d | 2025-04-04 | 2025-05-07 | 9, 15 | 2025-04-04 | 2025-05-07 | 23.33d | 0d |  | Jordan Terrell Carter; Juan Manuel Cortez Reyes; Tyler Gregory Okonma | 280h | 4,200 | 4,200 |
| 17 | 1.4.2 | **Desarrollo de la Aplicación** | 30d | 2025-03-20 | 2025-04-30 | 6 | 2025-03-20 | 2025-04-30 | 30d | 5d |  |  | 440h | 6,600 | 6,600 |
| 18 | 1.4.2.1 | Diseño Gráfico de la Aplicación | 6.67d | 2025-03-20 | 2025-03-28 | 9 | 2025-03-20 | 2025-03-28 | 6.67d | 5d | 0d | Jordan Terrell Carter; Tyler Gregory Okonma; Juan Manuel Cortez Reyes | 160h | 2,400 | 2,400 |
| 19 | 1.4.2.2 | Programación de la Aplicación | 23.33d | 2025-03-28 | 2025-04-30 | 9, 18 | 2025-03-28 | 2025-04-30 | 23.33d | 5d |  | Jordan Terrell Carter; Juan Manuel Cortez Reyes; Tyler Gregory Okonma | 280h | 4,200 | 4,200 |
| 20 | 1.5 | **Diseño Final** | 3.33d | 2025-05-08 | 2025-05-13 | 10, 13 | 2025-05-08 | 2025-05-13 | 3.33d | 0d |  |  | 80h | 1,200 | 1,200 |
| 21 | 1.5.1 | Diseño Final Desarrollado | 3.33d | 2025-05-08 | 2025-05-13 | 10, 13, 16, 19 | 2025-05-08 | 2025-05-13 | 3.33d | 0d |  | Jordan Timothy Jenks; Juan Manuel Cortez Reyes; Solána Imani Rowe | 80h | 1,200 | 1,200 |
| 22 | 1.6 | **Pruebas Internas** | 8.75d | 2025-05-13 | 2025-05-26 | 20 | 2025-05-13 | 2025-05-26 | 8.75d | 0d |  |  | 240h | 3,600 | 3,600 |
| 23 | 1.6.1 | Pruebas Hardware | 5d | 2025-05-13 | 2025-05-20 | 10, 20 | 2025-05-13 | 2025-05-20 | 5d | 3.75d |  | Antón Álvarez Alfaro; Fernando Gálvez Gómez; Francisco Gento López | 120h | 1,800 | 1,800 |
| 24 | 1.6.2 | Pruebas Software | 7.5d | 2025-05-13 | 2025-05-26 | 13, 20 | 2025-05-13 | 2025-05-26 | 7.5d | 0d |  | Antón Álvarez Alfaro; Jordan Terrell Carter; Juan Manuel Cortez Reyes; Tyler Gregory Okonma | 120h | 1,800 | 1,800 |

| ID | WBS | Task | Duration | Start | Finish | Predecessors | Baseline start | Baseline finish | Baseline duration | Total slack | Resources | Work | Cost | Baseline cost |
| --- | --- | --- | --- | --- | --- | --- | --- | --- | --- | --- | --- | --- | --- | --- |
| 25 | 1.7 | **Lanzamiento de la Plataforma Digital** | 15.12d | 2025-05-26 | 2025-06-16 | 22 | 2025-05-26 | 2025-06-16 | 15.12d | 0d |  | 484h | 7,260 | 7,260 |
| 26 | 1.7.1 | Ajustes Finales tras las Pruebas | 15.12d | 2025-05-26 | 2025-06-16 | 22 | 2025-05-26 | 2025-06-16 | 15.12d | 0d | Antón Álvarez Alfaro; Jordan Terrell Carter; Juan Manuel Cortez Reyes; Tyler Gregory Okonma | 484h | 7,260 | 7,260 |
| 27 | 1.8 | **Lanzamiento Comercial** | 7d | 2025-06-16 | 2025-06-25 | 25 | 2025-06-16 | 2025-06-25 | 7d | 0d |  | 56h | 840 | 840 |
| 28 | 1.8.1 | Informe de la Evaluación | 7d | 2025-06-16 | 2025-06-25 | 26 | 2025-06-16 | 2025-06-25 | 7d | 0d | Manuel Gato Thomasson | 56h | 840 | 840 |
| 29 | 1.9 | **Actualizaciones** | 8.33d | 2025-06-25 | 2025-07-07 | 27 | 2025-06-16 | 2025-06-26 | 8.33d | 0d |  | 400h | 4,666.67 | 4,666.67 |
| 30 | 1.9.1 | Posibles Actualizaciones | 8.33d | 2025-06-25 | 2025-07-07 | 28SS | 2025-06-16 | 2025-06-26 | 8.33d | 0d | Belcalis Marlenis Cephus; Carlos Marí; Jordan Timothy Jenks; Josep Puchades; Lara Fernández Castrelo; Solána Imani Rowe | 400h | 4,666.67 | 4,666.67 |
